Schedule from MS Project, 2018-09-17 to 2019-01-20, status date 2018-11-27, 1 hours a day, A marks actual dates.
Microsoft

## Calendars

- PRD2018-G03-Diary: Mon-Fri 20:00-21:00; Sat-Sun 17:00-19:00. Exceptions (off unless hours are given): 2018-10-17 to 2018-10-21 15:00-22:00 (UML工具PPT加班日), 2018-10-24 to 2018-10-28 19:00-22:00 (UML翻转I加班日), 2018-10-31 to 2018-11-04 16:00-22:00 (UML翻转II加班日), 2018-11-10 to 2018-11-12 10:00-23:00 (子计划加班日), 2018-11-19 to 2018-12-06 18:00-22:00, 2019-01-01 19:00-21:00 (UML概述加班日).

## Resources

| Resource |
| --- |
| 骆佳俊 |
| 沈启航 |
| 徐哲远 |
| 杨以恒 |
| 叶柏成 |

## Schedule

| ID | WBS | Task | Type | Duration | Start | Finish | Predecessors | Complete | Remaining | Total slack | Constraint | Resources | Work | Actual work | Text2 | Text3 | 输出 | 输入 |
| --- | --- | --- | --- | --- | --- | --- | --- | --- | --- | --- | --- | --- | --- | --- | --- | --- | --- | --- |
| 1 | 1 | **软件工程系列课程教学辅助网站系统-项目** |  | 305d? | 2018-09-17 19:00 A | 2019-01-20 18:00 |  | 64% | 108.98d? | 0d |  |  | 602.47h | 420.47h |  |  |  |  |
| 2 | 1.1 | **项目启动** |  | 112d | 2018-09-17 19:00 A | 2018-11-03 18:00 A |  | 100% |  |  |  |  | 275.4h | 275.4h |  |  |  |  |
| 3 | 1.1.1 | 人员召集 | manual | 1h | 2018-09-17 19:00 A | 2018-09-17 20:00 A |  | 100% |  |  |  | 沈启航 | 1h | 1h | 课题课程要求 | 人员名单 |  |  |
| 4 | 1.1.2 | 课题选定 |  | 1h | 2018-09-18 20:00 A | 2018-09-18 21:00 A | 3 | 100% |  |  | start no earlier than 2018-09-18 19:00 | 沈启航; 骆佳俊; 徐哲远; 杨以恒; 叶柏成 | 5h | 5h | 人员名单 | 选题 | 《项目章程》起草 | 课程要求 |
| 5 | 1.1.3 | 《项目章程》起草 |  | 1h | 2018-10-20 19:00 A | 2018-10-20 20:00 A | 4 | 100% |  |  | finish no earlier than 2018-10-20 20:00 | 沈启航 [30%] | 0.3h | 0.3h | 课题课程要求 | 项目章程初稿 | 《项目章程》初稿 | 课题选定 |
| 6 | 1.1.4 | 第一次正式会议 | manual | 1h | 2018-09-28 19:00 A | 2018-09-28 20:00 A | 4 | 100% |  |  |  | 骆佳俊; 沈启航 [50%]; 徐哲远; 杨以恒; 叶柏成 | 4.5h | 4.5h | 人员名单 | 会议记录 | GIT基本操作的了解及试用 UML的ppt模板选定 | 项目要求 |
| 7 | 1.1.5 | Project的学习 |  | 5h | 2018-10-01 20:00 A | 2018-10-05 21:00 A | 6 | 100% |  |  | start no earlier than 2018-10-01 19:00 | 骆佳俊 | 5h | 5h |  |  | Project的学习情况 | 学习资料 |
| 8 | 1.1.6 | Git的学习 |  | 1h | 2018-10-01 20:00 A | 2018-10-01 21:00 A | 6 | 100% |  |  | start no earlier than 2018-10-01 19:00 | 沈启航 | 1h | 1h |  |  | Git的学习情况 | 学习资料 |
| 9 | 1.1.7 | AxureRP学习 |  | 9h | 2018-10-01 20:00 A | 2018-10-07 19:00 A | 6 | 100% |  |  | finish no earlier than 2018-10-07 20:00 | 杨以恒; 徐哲远 | 16h | 16h |  |  | AxureRP学习情况 | 学习资料 |
| 10 | 1.1.8 | 第二次正式会议 | manual | 1h | 2018-10-08 20:00 A | 2018-10-08 21:00 A | 6, 7, 8, 9, 21, 23 | 100% |  |  |  | 骆佳俊; 沈启航; 徐哲远; 杨以恒; 叶柏成 | 5h | 5h |  |  | UMLppt的制作 | Project学习、Git学习 |
| 11 | 1.1.9 | **UML学习** |  | 84d | 2018-10-09 20:00 A | 2018-11-03 18:00 A | 10 | 100% |  |  |  |  | 237.6h | 237.6h |  |  |  |  |
| 12 | 1.1.9.1 | 翻转课堂UML概述PPT制作 | manual | 11h | 2018-10-09 20:00 A | 2018-10-17 16:00 A | 10 | 100% |  |  |  | 骆佳俊; 沈启航; 徐哲远; 杨以恒; 叶柏成 | 55h | 55h |  |  | UML概述翻转PPT | ppt模板 |
| 13 | 1.1.9.2 | 第三次正式会议 |  | 1h | 2018-10-17 16:00 A | 2018-10-17 17:00 A | 12, 10 | 100% |  |  |  | 骆佳俊; 沈启航; 徐哲远; 杨以恒; 叶柏成 | 5h | 5h | 翻转课堂UML概述PPT | 会议记录 | UML工具PPT的任务布置 | UML概述PPT |
| 14 | 1.1.9.3 | 翻转课堂UML工具PPT制作 | manual | 29h | 2018-10-17 19:00 A | 2018-10-21 20:00 A | 13 | 100% |  |  |  | 沈启航 [50%]; 骆佳俊 [50%]; 徐哲远 [50%]; 叶柏成 [50%]; 杨以恒 [50%] | 72.5h | 72.5h |  |  | UML工具PPT | ppt模板 |
| 15 | 1.1.9.4 | 第四次正式会议 | manual | 1h | 2018-10-23 19:00 A | 2018-10-23 20:00 A | 13, 14 | 100% |  |  |  | 骆佳俊; 沈启航; 徐哲远; 杨以恒; 叶柏成 | 5h | 5h | 翻转课堂UML工具PPT | 会议记录 | 甘特图&WBS 愿景和范围 质量保证计划文档及PPT | UML工具PPT |
| 16 | 1.1.9.5 | 翻转课堂UML基础IPPT制作 | manual | 15h | 2018-10-24 19:00 A | 2018-10-28 22:00 A | 15 | 100% |  |  | start no earlier than 2018-10-24 19:00 | 骆佳俊 [40%]; 沈启航 [40%]; 杨以恒 [40%]; 徐哲远 [40%]; 叶柏成 [40%] | 29h | 29h |  |  | UML基础IPPT | ppt模板 |
| 17 | 1.1.9.6 | 第五次正式会议 | manual | 1h | 2018-10-30 19:00 A | 2018-10-30 20:00 A | 15, 16 | 100% |  |  |  | 骆佳俊; 沈启航 [10%]; 徐哲远; 杨以恒; 叶柏成 | 4.1h | 4.1h | 翻转课堂UML基础IPPT | 会议记录 | 甘特图时间修改 需求项目工程计划PPT，界面原型PPT制作 | UML基础IPPT |
| 18 | 1.1.9.7 | 翻转课堂UML基础IIPPT制作 | manual | 16h | 2018-10-31 20:00 A | 2018-11-03 18:00 A | 17 | 100% |  |  | start no earlier than 2018-10-31 19:00 | 沈启航; 骆佳俊; 徐哲远; 叶柏成; 杨以恒 | 67h | 67h |  |  | UML基础II PPT | ppt模板 |
| 19 | 1.2 | **项目计划** |  | 204d | 2018-09-17 20:00 A | 2018-11-26 20:00 A |  | 100% |  |  |  |  | 145.07h | 145.07h |  |  |  |  |
| 20 | 1.2.1 | 资料申请与完善 |  | 1h | 2018-09-17 20:00 A | 2018-09-17 21:00 A | 3 | 100% |  |  |  | 骆佳俊 | 1h | 1h |  | 资源 | 资料 | 人员召集 |
| 21 | 1.2.2 | 软硬件环境落实 |  | 4d | 2018-10-06 17:00 A | 2018-10-07 19:00 A | 20 | 100% |  |  | finish no earlier than 2018-10-07 20:00 | 叶柏成 | 4h | 4h | 小组现有软硬件情况 | 硬件软件环境 | 资料 | 课题选定 |
| 22 | 1.2.3 | 识别项目干系人 |  | 1h | 2018-09-19 20:00 A | 2018-09-19 21:00 A | 4 | 100% |  |  |  | 骆佳俊 | 1h | 1h |  |  | 干系人表 | 课题选定 |
| 23 | 1.2.4 | 找ISO&GB模板和PPT模板 |  | 3h | 2018-09-20 20:00 A | 2018-09-22 18:00 A | 22 | 100% |  |  |  | 骆佳俊; 杨以恒 | 6h | 6h |  |  | 模板 | 课题选定 |
| 24 | 1.2.5 | 第六次正式会议 | manual | 1h | 2018-11-05 19:00 A | 2018-11-05 20:00 A | 17 | 100% |  |  |  | 骆佳俊; 沈启航; 徐哲远; 杨以恒; 叶柏成 | 5h | 5h |  |  |  |  |
| 25 | 1.2.6 | 《项目章程》修改v0.1.1 | manual | 1.67h | 2018-10-21 17:00 A | 2018-10-21 18:40 A | 5 | 100% |  |  |  | 沈启航 [10%]; 杨以恒 [30%] | 0.57h | 0.57h |  |  | 《项目章程》v0.1.1 | 《项目章程》起草 |
| 26 | 1.2.7 | 《项目章程》修改v0.1.2 | manual | 1h | 2018-10-21 18:40 A | 2018-10-21 19:40 A | 25 | 100% |  |  |  | 沈启航 [50%] | 0.5h | 0.5h |  |  | 《项目章程》v0.1.2 | 《项目章程》v0.1.1 |
| 27 | 1.2.8 | 《项目章程》发布 | milestone, manual | 0h | 2018-10-21 19:40 A | 2018-10-21 19:40 A | 26 | 100% |  |  |  | 骆佳俊; 沈启航; 徐哲远; 杨以恒; 叶柏成 |  |  |  |  | 《项目章程》 | 《项目章程》v0.1.2 |

| ID | WBS | Task | Type | Duration | Start | Finish | Predecessors | Complete | Constraint | Resources | Work | Actual work | 输出 | 输入 | Text2 | Text3 |
| --- | --- | --- | --- | --- | --- | --- | --- | --- | --- | --- | --- | --- | --- | --- | --- | --- |
| 28 | 1.2.9 | **制定需求工程项目计划** |  | 188d | 2018-09-28 20:00 A | 2018-11-25 21:00 A | 5 | 100% |  |  | 124h | 124h |  |  |  |  |
| 29 | 1.2.9.1 | 《需求工程项目计划》起草 | manual | 1h | 2018-09-28 20:00 A | 2018-09-28 21:00 A | 6 | 100% | start no earlier than 2018-09-28 19:00 | 沈启航 [50%] | 0.5h | 0.5h | 《需求工程计划》初步 | 《项目章程》 |  |  |
| 30 | 1.2.9.2 | 《需求工程项目计划》修订v0.1.1 | manual | 4h | 2018-09-29 17:00 A | 2018-09-30 19:00 A | 29 | 100% |  | 叶柏成; 骆佳俊; 沈启航; 徐哲远; 杨以恒 | 20h | 20h | 《需求工程项目计划》修订v0.1.1 | 《需求工程项目计划》起草 |  |  |
| 31 | 1.2.9.3 | 《需求工程项目计划》修订v0.1.2 | manual | 15h | 2018-10-17 19:00 A | 2018-10-19 20:00 A | 30 | 100% |  | 骆佳俊 [50%]; 沈启航 [50%]; 徐哲远 [50%]; 杨以恒 [50%]; 叶柏成 [50%] | 35h | 35h | 《需求工程项目计划》修订v0.1.2 | 《需求工程项目计划》修订v0.1.1 |  |  |
| 32 | 1.2.9.4 | 《需求工程项目计划》修订v0.1.3 | manual | 7d | 2018-10-26 19:00 A | 2018-10-28 20:00 A | 31 | 100% |  | 骆佳俊 [40%]; 沈启航 [60%]; 徐哲远 [60%]; 杨以恒 [60%]; 叶柏成 [60%] | 19.6h | 19.6h | 《需求工程项目计划》修订v0.1.3 | 《需求工程项目计划》修订v0.1.2 |  |  |
| 33 | 1.2.9.5 | 《需求工程项目计划》修订v0.2.0 | manual | 1h | 2018-10-30 19:00 A | 2018-10-30 20:00 A | 32 | 100% |  | 沈启航 [90%] | 0.9h | 0.9h | 《需求工程项目计划》修订v0.2.0 | 《需求工程项目计划》修订v0.1.3 |  |  |
| 34 | 1.2.9.6 | 《需求工程项目计划》修订v0.2.1 | manual | 1h | 2018-11-04 19:00 A | 2018-11-04 20:00 A | 33 | 100% |  | 沈启航 | 1h | 1h | 《需求工程项目计划》修订v0.2.1 | 《需求工程项目计划》修订v0.2.0 |  |  |
| 35 | 1.2.9.7 | 起草《项目范围管理计划》 | manual | 3h | 2018-11-10 19:00 A | 2018-11-10 22:00 A | 29 | 100% |  | 骆佳俊 | 3h | 3h | 《项目范围质量管理》 | 《项目范围质量管理》模板 | 《项目范围质量管理》模板 | 《项目范围质量管理》 |
| 36 | 1.2.9.8 | 起草《项目进度管理计划》 | manual | 3h | 2018-11-10 19:00 A | 2018-11-10 22:00 A | 29 | 100% |  | 骆佳俊 | 3h | 3h | 《项目进度管理计划》 | 《项目进度管理计划》模板 | 《项目进度管理计划》模板 | 《项目进度管理计划》 |
| 37 | 1.2.9.9 | 起草《项目成本管理计划》 | manual | 3h | 2018-11-10 19:00 A | 2018-11-10 22:00 A | 29 | 100% |  | 骆佳俊 | 3h | 3h | 《项目成本管理》 | 《项目成本管理》模板 | 《项目成本管理》模板 | 《项目成本管理》 |
| 38 | 1.2.9.10 | 起草《项目质量管理计划》 | manual | 3h | 2018-11-10 19:00 A | 2018-11-10 22:00 A | 29 | 100% |  | 骆佳俊 | 3h | 3h | 《项目质量管理计划》 | 《项目成本管理》模板 | 《项目成本管理》模板 | 《项目质量管理计划》 |
| 39 | 1.2.9.11 | 起草《人力资源管理计划》 | manual | 3h | 2018-11-10 19:00 A | 2018-11-10 22:00 A | 29 | 100% |  | 叶柏成 | 3h | 3h | 《人力资源管理子计划》 | 《人力资源管理子计划》模板 | 《人力资源管理子计划》模板 | 《人力资源管理子计划》 |
| 40 | 1.2.9.12 | 起草《沟通管理子计划》 | manual | 2h | 2018-11-10 19:00 A | 2018-11-10 22:00 A | 29 | 100% |  | 叶柏成 | 2h | 2h | 《沟通管理子计划》 | 《沟通管理子计划》模板 | 《沟通管理子计划》模板 | 《沟通管理子计划》 |
| 41 | 1.2.9.13 | 起草《风险管理子计划》 | manual | 3h | 2018-11-10 19:00 A | 2018-11-10 22:00 A | 29 | 100% |  | 叶柏成 | 3h | 3h | 《风险管理子计划》 | 《风险管理子计划》模板 | 《风险管理子计划》模板 | 《风险管理子计划》 |
| 42 | 1.2.9.14 | 起草《采购管理子计划》 | manual | 2h | 2018-11-10 19:00 A | 2018-11-10 21:00 A | 29 | 100% |  | 叶柏成 | 2h | 2h | 《采购管理子计划》 | 《采购管理子计划》模板 | 《采购管理子计划》模板 | 《采购管理子计划》 |
| 43 | 1.2.9.15 | 起草《配置管理子计划》 | manual | 2h | 2018-11-10 19:00 A | 2018-11-10 21:00 A | 29 | 100% | start no earlier than 2018-11-10 19:00 | 叶柏成 | 2h | 2h | 《配置管理子计划》 | 《配置管理子计划》 | 《配置管理子计划》 | 《配置管理子计划》 |
| 44 | 1.2.9.16 | 《需求工程项目计划》修订v0.3.0 | manual | 2h | 2018-11-11 19:00 A | 2018-11-11 21:00 A | 34, 35, 36, 37, 38, 39, 40, 41, 42, 43 | 100% |  | 叶柏成 | 2h | 2h | 《需求工程项目计划》修订v0.3.0 | 《需求工程项目计划》修订v0.2.1 |  |  |
| 45 | 1.2.9.17 | 《需求工程项目计划》修订v0.3.1 | manual | 2h | 2018-11-12 19:00 A | 2018-11-12 21:00 A | 44 | 100% |  | 叶柏成; 沈启航; 骆佳俊 | 6h | 6h | 《需求工程项目计划》修订v0.3.0 | 《需求工程项目计划》修订v0.3.0 |  |  |
| 46 | 1.2.9.18 | 第七次正式会议 | manual | 1d | 2018-11-13 19:00 A | 2018-11-13 20:00 A | 24 | 100% |  | 骆佳俊; 沈启航; 徐哲远; 杨以恒; 叶柏成 [50%] | 4.5h | 4.5h | 第七次正式会议 | 第六次正式会议 |  |  |
| 47 | 1.2.9.19 | 《需求工程项目计划》修订v0.3.2 | manual | 1d | 2018-11-12 21:00 A | 2018-11-12 22:00 A | 45, 24 | 100% |  | 叶柏成 [50%] | 0.5h | 0.5h | 《需求工程项目计划》修订v0.3.2 | 《需求工程项目计划》修订v0.3.1 |  |  |
| 48 | 1.2.9.20 | 《需求工程项目计划》修订v0.3.3 | manual | 1h | 2018-11-17 19:00 A | 2018-11-18 18:00 A | 47 | 100% |  | 叶柏成; 沈启航 | 2h | 2h | 《需求工程项目计划》修订v0.3.3 | 《需求工程项目计划》修订v0.3.2 |  |  |
| 49 | 1.2.9.21 | 《需求工程项目计划》修订v0.3.4 | manual | 1d | 2018-11-18 18:00 A | 2018-11-18 19:00 A | 48 | 100% |  | 叶柏成; 沈启航; 骆佳俊 | 3h | 3h | 《需求工程项目计划》修订v0.3.4 | 《需求工程项目计划》修订v0.3.3 |  |  |
| 50 | 1.2.9.22 | 《需求工程项目计划》修订v0.3.5 | manual | 1d | 2018-11-25 19:00 A | 2018-11-25 20:00 A | 49 | 100% |  | 沈启航; 叶柏成 | 2h | 2h | 《需求工程项目计划》修订v0.3.5 | 《需求工程项目计划》修订v0.3.4 |  |  |
| 51 | 1.2.9.23 | 《需求工程项目计划》修订v0.3.6 |  | 1d | 2018-11-25 20:00 A | 2018-11-25 21:00 A | 50 | 100% |  | 沈启航; 叶柏成; 骆佳俊 | 3h | 3h | 《需求工程项目计划》修订v0.3.6 | 《需求工程项目计划》修订v0.3.5 |  |  |
| 52 | 1.2.10 | 《质量保证计划》发布 | milestone | 0h | 2018-11-10 22:00 A | 2018-11-10 22:00 A | 38 | 100% |  | 叶柏成; 骆佳俊; 沈启航; 徐哲远; 杨以恒 |  |  | 《QA计划》 | 起草《项目质量管理计划》 |  |  |
| 53 | 1.2.11 | 《需求工程计划》v0.3.6 | milestone | 0h | 2018-11-25 21:00 A | 2018-11-25 21:00 A | 52, 27, 51 | 100% |  | 叶柏成; 骆佳俊; 沈启航; 徐哲远; 杨以恒 |  |  | 《需求工程计划》 | 《需求工程项目计划》修订v0.3.0 |  |  |
| 54 | 1.2.12 | 制作需求工程评审ppt |  | 3h | 2018-11-25 21:00 A | 2018-11-26 20:00 A | 53 | 100% |  | 徐哲远 | 3h | 3h | 需求工程评审ppt | 《需求工程计划》 |  |  |

| ID | WBS | Task | Type | Duration | Start | Finish | Predecessors | Remaining | Total slack | Free slack | Constraint | Resources | Work | 输出 | 输入 |
| --- | --- | --- | --- | --- | --- | --- | --- | --- | --- | --- | --- | --- | --- | --- | --- |
| 55 | 1.3 | **项目开发** |  | 90d? | 2018-11-20 19:00 A | 2018-12-23 19:00 | 2, 19, 54 | 90d? | 1d | 0d |  |  | 101h |  |  |
| 56 | 1.3.1 | **需求获取** |  | 31d | 2018-11-20 19:00 A | 2018-11-27 22:00 | 53 | 31d | 1d | 0d |  |  | 24h |  |  |
| 57 | 1.3.1.1 | 第八次正式会议 | manual | 1d | 2018-11-20 19:00 | 2018-11-20 20:00 | 46, 49 |  |  |  |  | 骆佳俊; 沈启航; 徐哲远; 杨以恒; 叶柏成 | 5h | 第八次正式会议 | 第七次会议布置的任务 |
| 58 | 1.3.1.2 | 定义产品愿景和项目范围 | manual | 1h | 2018-11-20 19:00 | 2018-11-20 20:00 | 57, 49 |  |  |  | start no earlier than 2018-11-20 19:00 | 沈启航 | 1h | 愿景与范围文档 | 课题选定 |
| 59 | 1.3.1.3 | 《愿景与范围》文档 | milestone, manual | 1h | 2018-11-20 20:00 | 2018-11-20 21:00 | 58 |  |  |  | start no earlier than 2018-11-23 19:00 | 沈启航 | 1h | 愿景与范围文档 | 与用户对接 |
| 60 | 1.3.1.4 | 绘制上下文图 | manual | 1d | 2018-11-23 19:00 | 2018-11-23 20:00 | 59 |  |  |  |  | 沈启航 | 1h | 《愿景与范围》v0.1.2 | 《愿景与范围》v 0.1.1 |
| 61 | 1.3.1.5 | 识别用户类型及其特征 |  | 1h | 2018-11-26 20:00 | 2018-11-26 21:00 | 60 |  | 0d |  |  | 徐哲远 | 1h | 识别用户文档类型及其特征 | 课题选定 |
| 62 | 1.3.1.6 | 用户访谈 | manual | 1d | 2018-11-20 21:00 | 2018-11-20 22:00 | 59 |  |  |  |  | 骆佳俊; 沈启航; 徐哲远; 杨以恒; 叶柏成 | 5h | 第九次正式会议 | 《愿景与范围》 |
| 63 | 1.3.1.7 | 第九次正式会议 | manual | 1d | 2018-11-21 18:00 | 2018-11-21 19:00 | 57, 62 |  |  |  |  | 骆佳俊; 沈启航; 徐哲远; 杨以恒; 叶柏成 | 5h | 第九次正式会议 | 第八次会议布置的任务 |
| 64 | 1.3.1.8 | 为每类用户选出用户代表 |  | 1h | 2018-11-26 21:00 | 2018-11-26 22:00 | 61 |  | 0d |  |  | 杨以恒 | 1h | 为每类用户选出用户代表文档 | 课题选定 |
| 65 | 1.3.1.9 | 识别系统事件和反应 |  | 1h | 2018-11-27 18:00 | 2018-11-27 19:00 | 64 |  | 0d |  |  | 叶柏成 | 1h | 识别系统事件和反应文档 | 课题选定 |
| 66 | 1.3.1.10 | 举办需求访谈 |  | 1h | 2018-11-27 19:00 | 2018-11-27 20:00 | 65 |  | 0d |  |  | 骆佳俊 | 1h | 访谈日志 | 课题选定 |
| 67 | 1.3.1.11 | 检查现有系统在需求方面的报告 |  | 1h | 2018-11-27 20:00 A | 2018-11-27 21:00 | 66 | 1h | 1d | 0d |  | 徐哲远 | 1h | 报告修订 | 课题选定 |
| 68 | 1.3.1.12 | 重用现有需求 |  | 1h | 2018-11-27 21:00 | 2018-11-27 22:00 | 67 |  | 1d | 0d |  | 叶柏成 | 1h | 重用现有需求报告 | 课题选定 |
| 69 | 1.3.2 | **需求分析** |  | 41d? | 2018-11-28 18:00 | 2018-12-09 19:00 | 56 |  | 1d |  |  |  | 56h |  |  |
| 70 | 1.3.2.1 | 分析需求可实现性 |  | 1h | 2018-11-28 18:00 | 2018-11-28 19:00 | 68, 53 |  | 1d | 0d |  | 骆佳俊 | 1h | 计划分析 | 可行性计划 |
| 71 | 1.3.2.2 | 创建用户界面以及技术原型 |  | 40h | 2018-11-28 19:00 | 2018-12-09 19:00 | 70 |  | 1d |  | finish no earlier than 2018-11-28 20:00 | 杨以恒 [50%]; 徐哲远 [50%]; 沈启航 [50%] | 46h | 原型 | 界面草图&用户需求 |
| 72 | 1.3.2.3 | 需求按优先级排序 |  | 1h | 2018-11-28 19:00 | 2018-11-28 20:00 | 70 |  | 46d | 0d |  | 叶柏成 | 1h |  | 需求分析 |
| 73 | 1.3.2.4 | 建立数据字典 |  | 1h | 2018-11-28 20:00 | 2018-11-28 21:00 | 72 |  | 46d | 0d |  | 骆佳俊 | 1h | 数据字典 | 需求分析 |
| 74 | 1.3.2.5 | 为需求建模 |  | 1h | 2018-11-28 21:00 | 2018-11-28 22:00 | 73 |  | 46d | 0d |  | 徐哲远 | 1h | 模型 | 需求分析 |
| 75 | 1.3.2.6 | 分析系统与外部世界之间的联系 |  | 1h | 2018-11-29 18:00 | 2018-11-29 19:00 | 74 |  | 46d | 45d |  | 骆佳俊 | 1h |  | 需求分析 |
| 76 | 1.3.2.7 | 第十次正式会议 | manual | 1d? | 2018-12-04 19:00 | 2018-12-04 20:00 | 63 |  |  |  |  | 骆佳俊; 沈启航; 徐哲远; 杨以恒; 叶柏成 | 5h |  |  |
| 77 | 1.3.3 | **需求规范说明** |  | 14d | 2018-12-11 19:00 | 2018-12-22 18:00 | 69 |  | 0d |  |  |  | 18h |  |  |
| 78 | 1.3.3.1 | 第十一次正式会议 | manual | 1d | 2018-12-11 19:00 | 2018-12-11 20:00 | 76 |  |  |  |  | 骆佳俊 [50%]; 徐哲远; 沈启航; 杨以恒; 叶柏成 | 4.5h |  |  |
| 79 | 1.3.3.2 | 使用需求文档模板 |  | 1h | 2018-12-17 20:00 | 2018-12-17 21:00 | 75, 53 |  | 1d | 0d | start no earlier than 2018-12-16 19:00 | 骆佳俊 | 1h | 需求文档模板 | 需求文档模板 |
| 80 | 1.3.3.3 | 明确需求来源 |  | 2h | 2018-12-18 20:00 | 2018-12-19 21:00 | 79 |  | 1d | 0d |  | 叶柏成 [50%] | 1h | 需求来源文档 | 需求文档模板 |
| 81 | 1.3.3.4 | 第十二次正式会议 | manual | 1h | 2018-12-18 19:00 | 2018-12-18 20:00 | 78 |  |  |  |  | 骆佳俊; 徐哲远; 沈启航; 杨以恒; 叶柏成 [50%] | 4.5h |  |  |
| 82 | 1.3.3.5 | 记录业务规则 |  | 1h | 2018-12-20 20:00 | 2018-12-20 21:00 | 80 |  | 1d | 0d |  | 叶柏成 | 1h | 完善业务规则 | 需求文档模板 |
| 83 | 1.3.3.6 | 记录非功能需求 |  | 1h | 2018-12-21 20:00 | 2018-12-21 21:00 | 82 |  | 1d | 0d |  | 徐哲远 | 1h | 完善非功能需求 | 需求文档模板 |
| 84 | 1.3.3.7 | 编写《需求规格说明书》 |  | 1h | 2018-12-22 17:00 | 2018-12-22 18:00 | 83 |  | 1d | 0d | start no earlier than 2018-12-12 12:00 | 徐哲远; 骆佳俊; 杨以恒; 叶柏成; 沈启航 | 5h | 需求规格说明书 | 需求规格说明书模板 |

| ID | WBS | Task | Type | Duration | Start | Finish | Predecessors | Total slack | Free slack | Constraint | Resources | Work | 输出 | 输入 |
| --- | --- | --- | --- | --- | --- | --- | --- | --- | --- | --- | --- | --- | --- | --- |
| 85 | 1.3.4 | **需求验证** |  | 3d | 2018-12-22 18:00 | 2018-12-23 19:00 | 77 | 1d |  |  |  | 3h |  |  |
| 86 | 1.3.4.1 | 需求评审 |  | 1h | 2018-12-22 18:00 | 2018-12-22 19:00 | 84, 53 | 1d | 0d |  | 杨以恒 | 1h | 评审结果 | 需求规格说明书 |
| 87 | 1.3.4.2 | 测试需求 |  | 1h | 2018-12-23 17:00 | 2018-12-23 18:00 | 86 | 1d | 0d |  | 杨以恒 | 1h | 需求测试报告 | 需求规格说明书 |
| 88 | 1.3.4.3 | 定义验收标准 |  | 1h | 2018-12-23 18:00 | 2018-12-23 19:00 | 87 | 1d | 0d |  | 叶柏成 | 1h | 验收标准结果 | 需求规格说明书 |
| 89 | 1.3.5 | 《需求规格说明书》发布 | milestone | 0h | 2018-12-23 19:00 | 2018-12-23 19:00 | 88 | 1d | 0d |  |  |  | 需求规格说明书 | 需求规格说明书 |
| 90 | 1.4 | **项目管理** |  | 25d | 2018-12-24 20:00 | 2019-01-12 18:00 | 55 | 0d |  |  |  | 24h |  |  |
| 91 | 1.4.1 | **需求管理** |  | 25d | 2018-12-24 20:00 | 2019-01-12 18:00 | 89 | 0d |  |  |  | 24h |  |  |
| 92 | 1.4.1.1 | 第十三次正式会议 | manual | 1d | 2018-12-25 19:00 | 2018-12-25 20:00 | 81 |  |  |  | 沈启航; 徐哲远; 叶柏成 [50%]; 骆佳俊 | 3.5h |  |  |
| 93 | 1.4.1.2 | 建立一个需求变更控制流程 |  | 1h | 2018-12-24 20:00 | 2018-12-24 21:00 | 89 | 13d | 0d |  | 徐哲远 | 1h | 输出流程 | 需求规格说明书 |
| 94 | 1.4.1.3 | 对需求变更进行影响分析 |  | 1h | 2018-12-25 20:00 | 2018-12-25 21:00 | 93 | 13d | 0d |  | 杨以恒 | 1h | 分析影响 | 需求规格说明书 |
| 95 | 1.4.1.4 | 建立基线并控制需求集合版本 |  | 1h | 2018-12-26 20:00 | 2018-12-26 21:00 | 94 | 13d | 0d |  | 叶柏成 | 1h | 基线 | 需求规格说明书 |
| 96 | 1.4.1.5 | 维护需求变更的历史记录 |  | 1h | 2018-12-27 20:00 | 2018-12-27 21:00 | 95 | 13d | 0d |  | 杨以恒 | 1h | 变更日历 | 需求规格说明书 |
| 97 | 1.4.1.6 | 跟踪每个需求的状态 |  | 1h | 2018-12-28 20:00 | 2018-12-28 21:00 | 96 | 13d | 0d |  | 徐哲远 | 1h | 状态报告 | 需求规格说明书 |
| 98 | 1.4.1.7 | 维护一个需求可跟踪矩阵 |  | 1h | 2018-12-29 17:00 | 2018-12-29 18:00 | 97 | 13d | 0d |  | 杨以恒 | 1h | 需求矩阵 | 需求规格说明书 |
| 99 | 1.4.1.8 | 使用需求管理工具 |  | 6h | 2018-12-29 18:00 | 2019-01-01 21:00 | 98 | 13d |  |  | 杨以恒; 骆佳俊; 徐哲远; 沈启航; 叶柏成 | 10h | 工具报表 | 需求规格说明书 |
| 100 | 1.4.1.9 | 第十四次正式会议 | manual | 1d | 2019-01-01 19:00 | 2019-01-01 20:00 | 92 |  |  |  | 骆佳俊; 徐哲远; 沈启航; 杨以恒; 叶柏成 [50%] | 4.5h |  |  |
| 101 | 1.4.1.10 | 《需求规格说明书》评审 | milestone, manual | 0h | 2019-01-12 18:00 | 2019-01-12 18:00 | 99 |  |  |  | 叶柏成 |  | 需求规格说明书 | 需求规格说明书 |
| 102 | 1.5 | **项目阶段收尾** |  | 16d? | 2019-01-08 19:00 | 2019-01-20 18:00 | 101, 90 | 0d |  |  |  | 57h |  |  |
| 103 | 1.5.1 | 汇总文档 |  | 2h | 2019-01-12 18:00 | 2019-01-13 18:00 | 101 | 0d |  |  | 徐哲远 | 2h | 汇总文档 | 需求规格说明书&需求工程计划书&项目章程 |
| 104 | 1.5.2 | 第十五次正式会议 | manual | 1h | 2019-01-08 19:00 | 2019-01-08 20:00 | 100 |  |  |  | 沈启航; 徐哲远; 叶柏成; 杨以恒; 骆佳俊 | 5h |  |  |
| 105 | 1.5.3 | 《汇总文档》 | milestone, manual | 0h | 2019-01-13 18:00 | 2019-01-13 18:00 | 103, 104 |  |  |  | 骆佳俊; 沈启航; 徐哲远; 杨以恒; 叶柏成 |  | 总评结果 | 汇总文档 |
| 106 | 1.5.4 | 项目总评 | manual | 1h | 2019-01-13 18:00 | 2019-01-13 19:00 | 103, 105 |  |  |  | 骆佳俊; 沈启航; 徐哲远; 叶柏成; 杨以恒 | 5h | 总评结果 | 需求规格说明书&需求工程计划书&项目章程 |
| 107 | 1.5.5 | 《项目总结报告》 | manual | 7h | 2019-01-14 20:00 | 2019-01-19 19:00 | 106 |  |  | finish no earlier than 2019-01-19 20:00 | 杨以恒; 沈启航; 骆佳俊; 徐哲远; 叶柏成 | 35h |  | 评审结果 |
| 108 | 1.5.6 | 《项目总结报告》评审修改 | manual | 1d? | 2019-01-20 17:00 | 2019-01-20 18:00 | 107 |  |  |  | 杨以恒; 沈启航; 骆佳俊; 徐哲远; 叶柏成 | 5h | 项目总结报告修订 | 评审结果 |
| 109 | 1.5.7 | 散伙饭 |  | 1d? | 2019-01-20 17:00 | 2019-01-20 18:00 | 107 | 0d |  |  | 杨以恒; 沈启航; 骆佳俊; 徐哲远; 叶柏成 | 5h |  | 评审结束 |
